# 结构及ID设计

Schedule from a web Gantt chart, 2025-09-01 to 2025-11-14.
Saturdays and Sundays are off

## Schedule

| ID | WBS | Task | Duration | Start | Finish | Predecessors | Status |
| --- | --- | --- | --- | --- | --- | --- | --- |
| 2 | 1 | 外观设计初稿 | 1d | 2025-09-01 | 2025-09-01 |  |  |
| 3 | 2 | 外观初稿评审 | 1d | 2025-09-01 | 2025-09-01 |  | waiting |
| 4 | 3 | 外观设计定稿 | 5d | 2025-09-02 | 2025-09-08 | 3 | waiting |
| 5 | 4 | 结构设计初稿 | 5d | 2025-09-09 | 2025-09-15 | 4 | waiting |
| 6 | 5 | 结构初稿评审 | 1d | 2025-09-16 | 2025-09-16 | 5 | waiting |
| 7 | 6 | 结构设计定稿 | 5d | 2025-09-17 | 2025-09-23 | 6 | waiting |
| 8 | 7 | 手板制作 | 7d | 2025-09-24 | 2025-10-02 | 7 | waiting |
| 9 | 8 | 手板评审 | 1d | 2025-10-03 | 2025-10-03 | 8 | waiting |
| 10 | 9 | 外壳小批量 | 30d | 2025-10-06 | 2025-11-14 | 9 | waiting |
| 11 | 10 | 电路原理图设计 | 14d | 2025-09-24 | 2025-10-13 | 7 | waiting |
| 12 | 11 | PCB layout | 5d | 2025-10-14 | 2025-10-20 | 11 | waiting |
| 13 | 12 | 测试 | 7d | 2025-10-21 | 2025-10-29 | 12 | waiting |
